Schedule from OmniPlan.
Project start 2015-08-14

## Resources

| Resource | Group |
| --- | --- |
| 资源 1 | staff |
| 设备 1 | equipment |
| 素材 1 | material |
| 群组 1 | group |
| 王仕贵 | staff |
| 陈建平 | staff |
| 李星 | staff |
| 章旭楠 | staff |
| 郭小亮 | staff |
| 黄小平 | staff |
| 季明清 | staff |
| 江枫林 | staff |
| 易永耀 | staff |

## Schedule

| ID | WBS | Task | Predecessors | Resources | Work |
| --- | --- | --- | --- | --- | --- |
| 1 | 1 | **交易平台新版建设计划** |  |  |  |
| 2 | 1.1 | **开发计划** |  |  |  |
| 3 | 1.1.1 | **开发平台搭建** |  |  |  |
| 4 | 1.1.1.1 | SSI基础框架建设 |  | 黄小平; 王仕贵 | 32.5h |
| 5 | 1.1.1.2 | Shiro细粒化权限控制 | 4 | 黄小平; 王仕贵 | 31.5h |
| 6 | 1.1.1.3 | Redis缓存构建 | 5 | 黄小平; 王仕贵 | 32h |
| 7 | 1.1.2 | **数据库设计** |  |  |  |
| 8 | 1.1.2.1 | 基础表设计 |  | 王仕贵 | 24h |
| 9 | 1.1.2.2 | 业务表设计 | 8 | 王仕贵 | 40h |
| 10 | 1.1.3 | **功能开发** |  |  |  |
| 11 | 1.1.3.1 | **基础模块** |  |  |  |
| 12 | 1.1.3.1.1 | **文件服务器** | 7 |  |  |
| 13 | 1.1.3.1.1.1 | 建立公共的文件上传接口 |  | 王仕贵 | 8h |
| 14 | 1.1.3.1.1.2 | 建立公共的文件转移接口 | 13 | 王仕贵 | 8h |
| 15 | 1.1.3.1.2 | **搜索服务器** | 12 |  |  |
| 16 | 1.1.3.1.2.1 | 搭建搜索服务器 |  | 王仕贵 | 8h |
| 17 | 1.1.3.1.2.2 | **品牌索引实例** | 16 |  |  |
| 18 | 1.1.3.1.2.2.1 | 索引查询 |  | 王仕贵 | 8h |
| 19 | 1.1.3.1.2.2.2 | 索引管理 | 18 |  | 8h |
| 20 | 1.1.3.1.2.3 | **产品索引实例** | 17 |  |  |
| 21 | 1.1.3.1.2.3.1 | 索引查询 |  | 王仕贵 | 8h |
| 22 | 1.1.3.1.2.3.2 | 索引管理 | 21 |  | 8h |
| 23 | 1.1.3.1.2.4 | **帮助索引实例** | 20 |  |  |
| 24 | 1.1.3.1.2.4.1 | 索引查询 |  | 王仕贵 | 8h |
| 25 | 1.1.3.1.2.4.2 | 索引管理 | 24 |  | 8h |

Notes:
- 2: 开发计划只包括交易平台自身功能模块及业务的开发
- 13: 包括图片上传、视屏上传、 / FLash / 上传、文件上传以及一些专用的上传接口
- 14: 包括图片转移、视屏转移、文件转移。。。

| ID | WBS | Task | Predecessors | Resources | Work |
| --- | --- | --- | --- | --- | --- |
| 26 | 1.1.3.1.2.5 | **规则索引实例** | 23 |  |  |
| 27 | 1.1.3.1.2.5.1 | 索引查询 |  | 王仕贵 | 8h |
| 28 | 1.1.3.1.2.5.2 | 索引管理 | 27 |  | 8h |
| 29 | 1.1.3.1.2.6 | **资讯索引实例** | 26 |  |  |
| 30 | 1.1.3.1.2.6.1 | 索引查询 |  | 王仕贵 | 8h |
| 31 | 1.1.3.1.2.6.2 | 索引管理 | 30 |  | 8h |
| 32 | 1.1.3.1.3 | **权限管理** |  |  |  |
| 33 | 1.1.3.1.3.1 | 角色管理 |  | 黄小平 | 8h |
| 34 | 1.1.3.1.3.2 | 用户管理 | 33 | 黄小平 | 8h |
| 35 | 1.1.3.1.3.3 | 菜单管理 | 34 | 黄小平 | 8h |
| 36 | 1.1.3.1.3.4 | 授权管理 | 35 | 黄小平 | 8h |
| 37 | 1.1.3.1.4 | **资讯类服务** |  |  |  |
| 38 | 1.1.3.1.4.1 | **帮助管理** |  |  |  |
| 39 | 1.1.3.1.4.1.1 | 帮助信息管理 |  | 季明清 | 8h |
| 40 | 1.1.3.1.4.1.2 | 帮助类别管理 | 39 | 季明清 | 8h |
| 41 | 1.1.3.1.4.2 | **资讯管理** | 38 |  |  |
| 42 | 1.1.3.1.4.2.1 | 资讯类型管理 |  | 季明清 | 8h |
| 43 | 1.1.3.1.4.2.2 | 资讯信息管理 | 42 | 季明清 | 8h |
| 44 | 1.1.3.1.4.3 | **规则管理** | 41 |  |  |
| 45 | 1.1.3.1.4.3.1 | 规则类别管理 |  | 季明清 | 8h |
| 46 | 1.1.3.1.4.3.2 | 规则信息管理 | 45 | 季明清 | 8h |
| 47 | 1.1.3.1.5 | 字典管理 |  | 章旭楠 | 8h |
| 48 | 1.1.3.1.6 | 类目管理 | 47 | 章旭楠 | 8h |
| 49 | 1.1.3.1.7 | **用户注册** | 48 |  |  |
| 50 | 1.1.3.1.7.1 | 品牌用户注册 |  | 章旭楠 | 8h |
| 51 | 1.1.3.1.7.2 | 终端用户注册 | 50 | 章旭楠 | 8h |

| ID | WBS | Task | Predecessors | Resources | Work |
| --- | --- | --- | --- | --- | --- |
| 52 | 1.1.3.2 | **品牌商后台** |  |  |  |
| 53 | 1.1.3.2.1 | **品牌展厅** |  |  |  |
| 54 | 1.1.3.2.1.1 | 门店展示 |  | 郭小亮 | 8h |
| 55 | 1.1.3.2.1.2 | 企业展示 | 54 | 郭小亮 | 8h |
| 56 | 1.1.3.2.1.3 | 展厅装修 | 55 | 郭小亮 | 8h |
| 57 | 1.1.3.2.1.4 | 陈列视觉 | 56 | 郭小亮 | 8h |
| 58 | 1.1.3.2.1.5 | **品牌资讯** | 57 |  |  |
| 59 | 1.1.3.2.1.5.1 | 新闻资讯 |  | 郭小亮 | 8h |
| 60 | 1.1.3.2.1.6 | **品牌资料** | 58 |  |  |
| 61 | 1.1.3.2.1.6.1 | 资料上传 |  | 郭小亮 | 8h |
| 62 | 1.1.3.2.1.6.2 | 资料管理 | 61 | 郭小亮 | 8h |
| 63 | 1.1.3.2.1.6.3 | 分类管理 | 62 | 郭小亮 | 8h |
| 64 | 1.1.3.2.1.7 | 品牌招募书 | 60 | 郭小亮 | 8h |
| 65 | 1.1.3.2.2 | **品牌管理** |  |  |  |
| 66 | 1.1.3.2.2.1 | **品牌管理** |  |  |  |
| 67 | 1.1.3.2.2.1.1 | 发布品牌 |  | 陈建平 | 8h |
| 68 | 1.1.3.2.2.1.2 | 资料修改 | 67 | 陈建平 | 8h |
| 69 | 1.1.3.2.2.1.3 | 品牌审核 | 67, 68 | 陈建平 | 8h |
| 70 | 1.1.3.2.2.1.4 | 区域设置 | 69 | 陈建平 | 8h |
| 71 | 1.1.3.2.2.1.5 | 用户授权 | 70 | 陈建平 | 8h |
| 72 | 1.1.3.2.2.1.6 | 授信管理 | 71 | 陈建平 | 8h |
| 73 | 1.1.3.2.2.2 | 域名设置 | 66 | 陈建平 | 8h |
| 74 | 1.1.3.2.3 | 转帐功能 | 73 | 陈建平 | 8h |
| 75 | 1.1.3.2.4 | **运费模版** |  |  |  |
| 76 | 1.1.3.2.4.1 | 运费明细管理 |  | 江枫林 | 8h |
| 77 | 1.1.3.2.4.2 | 运费模版管理 | 76 | 江枫林 | 8h |
| 78 | 1.1.3.2.4.3 | 运费区域管理 | 77 | 江枫林 | 8h |
| 79 | 1.1.3.2.4.4 | 运费模版设定 | 78 | 江枫林 | 8h |

| ID | WBS | Task | Predecessors | Resources | Work |
| --- | --- | --- | --- | --- | --- |
| 80 | 1.1.3.2.5 | **终端商管理** | 75 |  |  |
| 81 | 1.1.3.2.5.1 | 寻找终端商 |  | 江枫林 | 8h |
| 82 | 1.1.3.2.5.2 | 申请中的 | 81 | 江枫林 | 8h |
| 83 | 1.1.3.2.5.3 | 平台推荐 | 82 | 江枫林 | 8h |
| 84 | 1.1.3.2.5.4 | 已合作的 | 83 | 江枫林 | 8h |
| 85 | 1.1.3.2.6 | **产品管理** |  |  |  |
| 86 | 1.1.3.2.6.1 | **产品管理** |  |  |  |
| 87 | 1.1.3.2.6.1.1 | 产品发布 |  | 黄小平 | 8h |
| 88 | 1.1.3.2.6.1.2 | 产品预览 | 87 | 黄小平 | 8h |
| 89 | 1.1.3.2.6.1.3 | **产品管理** | 88 |  |  |
| 90 | 1.1.3.2.6.1.3.1 | 推荐管理 |  | 黄小平 | 8h |
| 91 | 1.1.3.2.6.1.3.2 | 预定管理 | 90 | 黄小平 | 8h |
| 92 | 1.1.3.2.6.1.3.3 | **库存管理** | 91 |  |  |
| 93 | 1.1.3.2.6.1.3.3.1 | 预警设置 |  | 黄小平 | 8h |
| 94 | 1.1.3.2.6.1.3.3.2 | 库存查询 | 93 | 黄小平 | 8h |
| 95 | 1.1.3.2.6.1.3.3.3 | 缺货管理 | 94 | 黄小平 | 8h |
| 96 | 1.1.3.2.6.1.3.4 | 拿样管理 | 92 | 黄小平 | 8h |
| 97 | 1.1.3.2.6.1.3.5 | 调价管理 | 96 | 黄小平 | 8h |
| 98 | 1.1.3.2.6.1.3.6 | 上下架管理 | 97 | 黄小平 | 8h |
| 99 | 1.1.3.2.6.1.3.7 | 产品回收 | 98 | 黄小平 | 8h |
| 100 | 1.1.3.2.6.2 | **产品类别管理** | 86 |  |  |
| 101 | 1.1.3.2.6.2.1 | 类别设置 |  | 黄小平 | 8h |
| 102 | 1.1.3.2.6.2.2 | 分类查询 | 101 | 黄小平 | 8h |
| 103 | 1.1.3.2.6.3 | **批量上传管理** | 100 |  |  |
| 104 | 1.1.3.2.6.3.1 | 上传文件模版管理 |  | 黄小平 | 8h |
| 105 | 1.1.3.2.6.3.2 | 上传文件数据处理 | 104 | 黄小平 | 8h |

| ID | WBS | Task | Predecessors | Resources | Work |
| --- | --- | --- | --- | --- | --- |
| 106 | 1.1.3.2.7 | **帐户管理** |  |  |  |
| 107 | 1.1.3.2.7.1 | 联系资料 |  | 李星 | 8h |
| 108 | 1.1.3.2.7.2 | 企业资料 | 107 | 李星 | 8h |
| 109 | 1.1.3.2.7.3 | 证书管理 | 108 | 李星 | 8h |
| 110 | 1.1.3.2.7.4 | 密码管理 | 109 | 李星 | 8h |
| 111 | 1.1.3.2.7.5 | 安全验证 | 110 | 李星 | 8h |
| 112 | 1.1.3.2.8 | **交易管理** | 106 |  |  |
| 113 | 1.1.3.2.8.1 | 发货地址管理 |  | 李星 | 8h |
| 114 | 1.1.3.2.8.2 | 物流公司管理 | 113 | 李星 | 8h |
| 115 | 1.1.3.2.8.3 | 服务评分管理 | 114 | 李星 | 8h |
| 116 | 1.1.3.2.8.4 | **订单交易管理** | 115 |  |  |
| 117 | 1.1.3.2.8.4.1 | 订单查询 |  | 李星 | 8h |
| 118 | 1.1.3.2.8.4.2 | 订单备注 | 117 | 李星 | 8h |
| 119 | 1.1.3.2.8.4.3 | 订单详情 | 118 | 李星 | 8h |
| 120 | 1.1.3.2.8.4.4 | 修改金额 | 119 | 李星 | 8h |
| 121 | 1.1.3.2.8.4.5 | 关闭订单 | 120 | 李星 | 8h |
| 122 | 1.1.3.2.8.4.6 | 延长收货期限 | 121 | 李星 | 8h |
| 123 | 1.1.3.2.8.4.7 | 发货管理 | 122 | 李星 | 8h |
| 124 | 1.1.3.2.8.4.8 | 退款管理 | 123 | 李星 | 8h |
| 125 | 1.1.3.2.8.5 | 询价单管理 |  |  | 8h |
| 126 | 1.1.3.2.9 | 终端商财务帐 | 112 |  | 8h |
| 127 | 1.1.3.2.10 | **图片管理** | 48, 49 |  |  |
| 128 | 1.1.3.2.10.1 | 图片管理 |  | 章旭楠 | 8h |
| 129 | 1.1.3.2.10.2 | 图片上传 | 128 | 章旭楠 | 8h |
| 130 | 1.1.3.2.10.3 | 分类管理 | 129 | 章旭楠 | 8h |
| 131 | 1.1.3.2.10.4 | 回收站 | 130 | 章旭楠 | 8h |

| ID | WBS | Task | Predecessors | Constraint | Resources | Work |
| --- | --- | --- | --- | --- | --- | --- |
| 132 | 1.1.3.2.11 | **消息管理** | 127 |  |  |  |
| 133 | 1.1.3.2.11.1 | 站内消息 |  |  | 章旭楠 | 8h |
| 134 | 1.1.3.2.11.2 | 系统消息 | 133 |  | 章旭楠 | 8h |
| 135 | 1.1.3.2.11.3 | 在线留言 | 134 |  | 章旭楠 | 8h |
| 136 | 1.1.3.2.12 | 优化建议 | 132 |  | 章旭楠 | 8h |
| 137 | 1.1.3.3 | **终端商后台** |  |  |  |  |
| 138 | 1.1.3.3.1 | **授权产品库** |  |  |  |  |
| 139 | 1.1.3.3.1.1 | 授权产品库 |  |  | 易永耀 | 8h |
| 140 | 1.1.3.3.1.2 | 常进款式 | 139 |  | 易永耀 | 8h |
| 141 | 1.1.3.3.1.3 | 浏览记录 | 140 |  | 易永耀 | 8h |
| 142 | 1.1.3.3.2 | **进货单管理** | 138 |  |  |  |
| 143 | 1.1.3.3.2.1 | 加入进货单 |  |  | 易永耀 | 8h |
| 144 | 1.1.3.3.2.2 | 实时取价 | 143 |  | 易永耀 | 8h |
| 145 | 1.1.3.3.2.3 | 清空进货单 | 144 |  | 易永耀 | 8h |
| 146 | 1.1.3.3.2.4 | 移出产品 | 145 |  | 易永耀 | 8h |
| 147 | 1.1.3.3.2.5 | 加入收藏夹 | 146 |  | 易永耀 | 8h |
| 148 | 1.1.3.3.2.6 | 批量移出已下架产品 | 147 |  | 易永耀 | 8h |
| 149 | 1.1.3.3.3 | **结算单管理** | 142 |  |  |  |
| 150 | 1.1.3.3.3.1 | 收货地址管理 |  |  | 易永耀 | 8h |
| 151 | 1.1.3.3.3.2 | 订单留言管理 | 150 |  | 易永耀 | 8h |
| 152 | 1.1.3.3.3.3 | 生成订单管理 | 151 |  | 易永耀 | 8h |
| 153 | 1.1.3.3.4 | 品牌商财务帐 | 149 |  | 易永耀 | 8h |
| 154 | 1.1.3.3.5 | 转帐功能 | 74 | start no earlier than 2015-08-26 | 陈建平 | 8h |
| 155 | 1.1.3.3.6 | 微店管理 | 136 |  | 章旭楠 | 8h |
| 156 | 1.1.3.3.7 | 服务管理 | 155 |  | 章旭楠 | 8h |

| ID | WBS | Task | Predecessors | Resources | Work |
| --- | --- | --- | --- | --- | --- |
| 157 | 1.1.3.3.8 | **加盟管理** | 80 |  |  |
| 158 | 1.1.3.3.8.1 | 已加盟品牌库 |  | 江枫林 | 8h |
| 159 | 1.1.3.3.8.2 | 申请加盟管理 | 158 | 江枫林 | 8h |
| 160 | 1.1.3.3.8.3 | 品牌收藏夹 | 159 | 江枫林 | 8h |
| 161 | 1.1.3.4 | **品牌展厅** | 53 |  |  |
| 162 | 1.1.3.4.1 | 品牌首页 |  | 郭小亮 | 8h |
| 163 | 1.1.3.4.2 | 品牌招募书 | 162 | 郭小亮 | 8h |
| 164 | 1.1.3.4.3 | 陈列视觉 | 163 | 郭小亮 | 8h |
| 165 | 1.1.3.4.4 | 产品展示 | 164 | 郭小亮 | 8h |
| 166 | 1.1.3.4.5 | 企业展示 | 165 | 郭小亮 | 8h |
| 167 | 1.1.3.4.6 | 门店展示 | 166 | 郭小亮 | 8h |
| 168 | 1.1.3.4.7 | 品牌新闻 | 167 | 郭小亮 | 8h |
| 169 | 1.1.3.4.8 | 资料下载 | 168 | 郭小亮 | 8h |
| 170 | 1.1.3.5 | **前台展示** |  |  |  |
| 171 | 1.1.3.5.1 | **首页** | 15 |  |  |
| 172 | 1.1.3.5.1.1 | 产品分类 |  | 王仕贵 | 8h |
| 173 | 1.1.3.5.1.2 | 优先品牌 | 172 | 王仕贵 | 8h |
| 174 | 1.1.3.5.1.3 | 女装品牌馆 | 173 | 王仕贵 | 8h |
| 175 | 1.1.3.5.1.4 | 男装品牌馆 | 174 | 王仕贵 | 8h |
| 176 | 1.1.3.5.1.5 | 内衣品牌馆 | 175 | 王仕贵 | 8h |
| 177 | 1.1.3.5.1.6 | 箱包品牌馆 | 176 | 王仕贵 | 8h |
| 178 | 1.1.3.5.1.7 | 其它 | 177 | 王仕贵 | 8h |
| 179 | 1.1.3.5.1.8 | 资讯 | 178 | 王仕贵 | 8h |
| 180 | 1.1.3.5.2 | 品牌厂商 | 171 | 王仕贵 | 8h |
| 181 | 1.1.3.5.3 | 终端门店 | 180 | 王仕贵 | 8h |
| 182 | 1.1.3.5.4 | 品牌订货会 | 181 | 王仕贵 | 8h |
| 183 | 1.1.3.5.5 | 男装市场 | 182 | 王仕贵 | 8h |
| 184 | 1.1.3.5.6 | 女装市场 | 183 | 王仕贵 | 8h |

| ID | WBS | Task | Predecessors | Constraint | Resources | Work |
| --- | --- | --- | --- | --- | --- | --- |
| 185 | 1.1.3.5.7 | **帮助与规则** | 37 |  |  |  |
| 186 | 1.1.3.5.7.1 | 帮助信息 |  |  | 季明清 | 8h |
| 187 | 1.1.3.5.7.2 | 规则信息 | 186 |  | 季明清 | 8h |
| 188 | 1.1.3.5.8 | 资讯 | 185 |  | 季明清 | 8h |
| 189 | 1.2 | **对接计划** |  |  |  |  |
| 190 | 1.2.1 | **支撑系统** |  |  |  |  |
| 191 | 1.2.1.1 | **品牌信息管理接口** |  | start no earlier than 2015-09-01 |  |  |
| 192 | 1.2.1.1.1 | 品牌信息查询 |  | start no earlier than 2015-09-01 |  | 8h |
| 193 | 1.2.1.1.2 | 处理申请(审核通过/审核不通过/取消/合作/终止合作) |  | start no earlier than 2015-09-01 |  | 8h |
| 194 | 1.2.1.1.3 | >任务 1 |  | start no earlier than 2015-09-01 |  | 8h |
| 195 | 1.2.1.2 | **帮助与类别** |  | start no earlier than 2015-09-01 |  |  |
| 196 | 1.2.1.2.1 | 帮助信息 |  | start no earlier than 2015-09-01 | 季明清 | 8h |
| 197 | 1.2.1.2.2 | 帮助类别 | 196 | start no earlier than 2015-09-01 | 季明清 | 8h |
| 198 | 1.2.1.3 | **资讯与类别** | 195 | start no earlier than 2015-09-01 |  |  |
| 199 | 1.2.1.3.1 | 资讯信息 |  | start no earlier than 2015-09-01 | 季明清 | 8h |
| 200 | 1.2.1.3.2 | 资讯类别 | 199 | start no earlier than 2015-09-01 | 季明清 | 8h |
| 201 | 1.2.1.4 | **规则与类别** | 198 | start no earlier than 2015-09-01 |  |  |
| 202 | 1.2.1.4.1 | 规则信息 |  | start no earlier than 2015-09-01 | 季明清 | 8h |
| 203 | 1.2.1.4.2 | 规则类别 | 202 | start no earlier than 2015-09-01 | 季明清 | 8h |
| 204 | 1.2.1.5 | **广告与广告位** |  | start no earlier than 2015-09-01 |  |  |
| 205 | 1.2.1.5.1 | 广告信息 |  | start no earlier than 2015-09-01 |  | 8h |
| 206 | 1.2.1.5.2 | 广告位信息 | 205 | start no earlier than 2015-09-01 |  | 8h |
| 207 | 1.2.1.6 | **购买服务** | 204 | start no earlier than 2015-09-01 |  |  |
| 208 | 1.2.1.6.1 | 品牌商购买服务 |  | start no earlier than 2015-09-01 | 章旭楠 | 8h |
| 209 | 1.2.1.6.2 | 终端商购买服务 | 208 | start no earlier than 2015-09-01 | 章旭楠 | 8h |

Notes:
- 189: 指与第三方系统对接的开发

| ID | WBS | Task | Constraint | Resources | Work |
| --- | --- | --- | --- | --- | --- |
| 210 | 1.2.2 | **ERP系统** |  |  |  |
| 211 | 1.2.2.1 | 采购订单 | start no earlier than 2015-09-01 | 李星 | 8h |
| 212 | 1.2.2.2 | 发货通知 | start no earlier than 2015-09-01 | 李星 | 8h |
| 213 | 1.2.2.3 | 一键补货 | start no earlier than 2015-09-01 | 易永耀 | 8h |
| 214 | 1.2.2.4 | 授权产品 | start no earlier than 2015-09-01 | 易永耀 | 8h |
| 215 | 1.2.2.5 | 供应商信息 | start no earlier than 2015-09-01 | 陈建平 | 8h |
| 216 | 1.2.2.6 | 品牌信息 | start no earlier than 2015-09-01 | 陈建平 | 8h |
| 217 | 1.2.2.7 | 产品调价 | start no earlier than 2015-09-01 | 黄小平 | 8h |
| 218 | 1.3 | 测试计划 |  |  | 8h |
